# 高风险管控平台建设

Schedule from a web Gantt chart, 2024-03-09 to 2024-11-02.
Every day is a working day

## Schedule

| ID | WBS | Task | Duration | Start | Finish | Predecessors | Complete | inPeople | Status |
| --- | --- | --- | --- | --- | --- | --- | --- | --- | --- |
| 2 | 1 | **高风险规则库建设** | 239d | 2024-03-09 | 2024-11-02 |  | 68% |  |  |
| 3 | 1.1 | 规则库门户通用脚手架 | 42d | 2024-03-09 | 2024-04-19 |  | 100% | 何水浪、汪家杰 | done |
| 4 | 1.2 | 高风险规则拦截接口 | 63d | 2024-04-20 | 2024-06-21 | 3 | 100% | 何水浪、汪家杰 | done |
| 5 | 1.3 | 高危规则动态配置 | 28d | 2024-06-22 | 2024-07-19 | 4 | 100% | 陈爽、江晋杭 | done |
| 6 | 1.4 | 高危命令动态配置 | 91d | 2024-04-20 | 2024-07-19 |  |  | 陈爽、江晋杭、王鸿友 |  |
| 7 | 1.5 | 正则表达式自动生成 | 40d | 2024-04-20 | 2024-05-29 |  | 80% | 陈爽、江晋杭、王鸿友 |  |
| 8 | 1.6 | 风险规则库 - 日志模块 | 36d | 2024-03-24 | 2024-04-28 |  | 100% | 江晋杭 | done |
| 9 | 1.7 | 风险规则库-数据库生产环境还在申请中 | 36d | 2024-09-26 | 2024-10-31 |  |  |  |  |
| 10 | 1.8 | **接口服务[三方数据导入]** | 118d | 2024-07-08 | 2024-11-02 |  | 92% |  |  |
| 11 | 1.8.1 | 对接 cmdb 资产数据 | 73d | 2024-07-08 | 2024-09-18 |  | 100% | 江晋杭 | done |
| 12 | 1.8.2 | 对接安全中心[资产账密] | 45d | 2024-09-19 | 2024-11-02 | 11 | 80% | 江晋杭 |  |
| 13 | 2 | **接入多平台工作流建设** | 112d | 2024-06-27 | 2024-10-16 |  | 100% |  |  |
| 14 | 2.1 | PC端工作流 | 59d | 2024-06-27 | 2024-08-24 |  | 100% | 江晋杭 | done |
| 15 | 2.2 | 移动端工作流UI | 53d | 2024-08-25 | 2024-10-16 | 14 | 100% | 何耀 | done |
| 16 | 3 | **高风险堡垒机建设** | 235d | 2024-03-09 | 2024-10-29 |  | 84% |  |  |
| 17 | 3.1 | **堡垒机组件部署** | 206d | 2024-03-09 | 2024-09-30 |  | 100% | 汪家杰、何水浪 |  |
| 18 | 3.1.1 | Jumpserver Core 组件部署 | 127d | 2024-03-09 | 2024-07-13 |  | 100% |  | done |
| 19 | 3.1.2 | Koko 组件部署 | 122d | 2024-03-09 | 2024-07-08 |  | 100% |  | done |
| 20 | 3.1.3 | 远程应用机[Windows资产] | 84d | 2024-07-09 | 2024-09-30 | 19 | 100% |  | done |
| 21 | 3.2 | SSO单点登录以及添加登录短信认证 | 51d | 2024-08-14 | 2024-10-03 |  | 100% | 江晋杭 | done |
| 22 | 3.3 | 登陆日志模块 | 48d | 2024-08-14 | 2024-09-30 |  | 80% | 江晋杭 |  |
| 23 | 3.4 | 堡垒机的资产支持批量导入 | 29d | 2024-10-01 | 2024-10-29 |  |  |  |  |
| 24 | 3.5 | 堡垒机资产、用户等模块 数据量多大而卡顿 | 29d | 2024-10-01 | 2024-10-29 |  | 100% |  | done |
| 25 | 3.6 | **堡垒机终端组件** | 149d | 2024-05-21 | 2024-10-16 |  | 82% |  |  |
| 26 | 3.6.1 | **Koko 实现规则拦截** | 70d | 2024-05-21 | 2024-07-29 |  | 31% | 何水浪 |  |
| 27 | 3.6.1.1 | 普通高危Linux命令 | 22d | 2024-05-21 | 2024-06-11 |  | 100% |  | done |
| 28 | 3.6.1.2 | MySQL大部分的高危命令 | 33d | 2024-06-12 | 2024-07-14 | 27 |  |  |  |
| 29 | 3.6.1.3 | Shell复杂命令 | 15d | 2024-07-15 | 2024-07-29 | 28 |  |  | waiting |
| 30 | 3.6.2 | 实现接口调用加密 | 29d | 2024-05-21 | 2024-06-18 |  | 100% | 何水浪 |  |
| 31 | 3.6.3 | 实现事中审批 | 46d | 2024-06-12 | 2024-07-27 |  | 90% | 何水浪 |  |
| 32 | 3.6.4 | 附件服务器的下载 | 79d | 2024-07-30 | 2024-10-16 |  | 90% | 何水浪、江东山 |  |
| 33 | 3.6.5 | 附件服务器的上传 | 79d | 2024-07-30 | 2024-10-16 |  | 90% | 何水浪、江东山 |  |
| 34 | 3.6.6 | 固定条件+非固定条件优化拦截 | 79d | 2024-07-30 | 2024-10-16 |  | 100% | 何水浪、江东山 | done |

Notes:
- 7: 复杂的命令自动转换成正则表达式尚未完成
- 9: 递交了一些材料，需要等验收会，然后在ITSM上走流程。
- 12: 已经完成初步对接，同时接口有所调整
- 15: 移动端 Mobile 暂时搁置
- 17: Core 组件 Koko组件等大部分组件以及完成，一些特殊功能的组件还没完成部署
- 22: 详细的高危日志，还在等待与电信人员沟通需求
- 24: 已完成分页查询
- 29: 暂时不做
- 31: OA通知尚未开始
- 32: 前端正在测试
- 33: 前端正在测试
